# HidroSense: Sistem Manajemen Budidaya Selada Hidroponik NFT dengan Deteksi Hama dan Rekomendasi Perawatan berdasarkan Cuaca Menggunakan YOLO berbasis Mobile

Schedule from ProjectLibre, 2026-08-19 to 2026-11-27.

## Calendars

- HidroSense - Standard: Mon-Fri 08:00-12:00, 13:00-17:00; Sat-Sun off.
- Penyerahan - Sabtu: Mon-Sat 08:00-12:00, 13:00-17:00; Sun off.

## Resources

| Resource | Group |
| --- | --- |
| Unassigned |  |
| Aditya Dwi Ferdiansyah | Scrum Master / Backend Developer |
| Siti Raudatul Jannah | Product Owner / Analyst |
| Fakhrian Iqbal Zulkarnain | UI/UX Designer |
| Mochammad Wildan Alqori'in | Frontend Flutter Developer |
| Achmad Nuhan T. | Tester |

## Schedule

| ID | WBS | Task | Duration | Start | Finish | Predecessors | Resources |
| --- | --- | --- | --- | --- | --- | --- | --- |
| 1 | root | **HidroSense: Sistem Manajemen Budidaya Selada Hidroponik NFT dengan Deteksi Hama dan Rekomendasi Perawatan berdasarkan Cuaca Menggunakan YOLO berbasis Mobile** | 7300e% | 2026-08-19 | 2026-11-27 |  |  |
| 2 | 1 | **Identifikasi dan Perancangan Sistem** | 800e% | 2026-08-19 | 2026-08-28 |  |  |
| 3 | 1.1 | Wawancara dan observasi kegiatan budidaya | 150e% | 2026-08-19 | 2026-08-20 |  | Aditya Dwi Ferdiansyah [25%]; Fakhrian Iqbal Zulkarnain [25%]; Siti Raudatul Jannah [25%] |
| 4 | 1.2 | Identifikasi masalah, kebutuhan pengguna, dan proses bisnis | 200e% | 2026-08-20 | 2026-08-24 | 3 | Siti Raudatul Jannah [25%] |
| 5 | 1.3 | Menetapkan tujuan, ruang lingkup, dan batasan produk | 50e% | 2026-08-24 | 2026-08-24 | 4 | Achmad Nuhan T. [25%]; Aditya Dwi Ferdiansyah [25%]; Fakhrian Iqbal Zulkarnain [12%]; Mochammad Wildan Alqori'in [25%]; Siti Raudatul Jannah [25%] |
| 6 | 1.4 | Menetapkan pendekatan pengembangan dan tanggung jawab | 50e% | 2026-08-25 | 2026-08-25 | 5 | Achmad Nuhan T. [25%]; Aditya Dwi Ferdiansyah [25%]; Fakhrian Iqbal Zulkarnain [12%]; Mochammad Wildan Alqori'in [25%]; Siti Raudatul Jannah [25%] |
| 7 | 1.5 | Menyusun System Request dan draf SRS | 200e% | 2026-08-25 | 2026-08-27 | 6 | Siti Raudatul Jannah [25%] |
| 8 | 1.6 | Menyusun Product Backlog awal bersama tim | 50e% | 2026-08-27 | 2026-08-27 | 7 | Achmad Nuhan T. [25%]; Aditya Dwi Ferdiansyah [12%]; Fakhrian Iqbal Zulkarnain [25%]; Mochammad Wildan Alqori'in [12%]; Siti Raudatul Jannah [25%] |
| 9 | 1.7 | Menyusun Project Charter, WBS, dan jadwal | 100e% | 2026-08-28 | 2026-08-28 | 8, 11, 12 | Achmad Nuhan T. [25%]; Aditya Dwi Ferdiansyah [25%]; Fakhrian Iqbal Zulkarnain [25%]; Mochammad Wildan Alqori'in [25%]; Siti Raudatul Jannah [25%] |
| 10 | 1.8 | Rancangan proses bisnis dan Use Case Diagram awal | 150e% | 2026-08-24 | 2026-08-25 | 4 | Fakhrian Iqbal Zulkarnain [12%] |
| 11 | 1.9 | Rancangan ERD dan struktur tabel awal | 200e% | 2026-08-26 | 2026-08-27 | 6, 10 | Aditya Dwi Ferdiansyah [12%]; Mochammad Wildan Alqori'in [12%] |
| 12 | 1.10 | Identifikasi sumber dataset, perangkat uji, dan layanan eksternal | 200e% | 2026-08-25 | 2026-08-27 | 6 | Achmad Nuhan T. [25%]; Aditya Dwi Ferdiansyah [12%]; Fakhrian Iqbal Zulkarnain [12%]; Mochammad Wildan Alqori'in [12%] |
| 13 | 2 | **SPRINT 1: Fondasi Sistem dan Pencatatan Awal** | 1700e% | 2026-08-31 | 2026-09-22 |  |  |
| 14 | 2.1 | **Analyst** | 500e% | 2026-08-31 | 2026-09-04 |  |  |
| 15 | 2.1.1 | Memperinci kebutuhan autentikasi, inventaris, stok, dan penyemaian | 200e% | 2026-08-31 | 2026-09-01 | 9 | Siti Raudatul Jannah [25%] |
| 16 | 2.1.2 | Menyusun user story dan kriteria penerimaan | 100e% | 2026-09-02 | 2026-09-02 | 15 | Siti Raudatul Jannah [25%] |
| 17 | 2.1.3 | Menetapkan matriks hak akses bersama Product Owner | 100e% | 2026-09-03 | 2026-09-03 | 16 | Siti Raudatul Jannah [25%] |
| 18 | 2.1.4 | Memperinci aturan sesi luring dan sinkronisasi | 100e% | 2026-09-04 | 2026-09-04 | 17 | Aditya Dwi Ferdiansyah [8%]; Siti Raudatul Jannah [25%] |
| 19 | 2.2 | **Designer** | 400e% | 2026-09-02 | 2026-09-07 |  |  |
| 20 | 2.2.1 | Menyusun Activity Diagram fitur sprint pertama | 100e% | 2026-09-02 | 2026-09-02 | 15 | Fakhrian Iqbal Zulkarnain [12%] |
| 21 | 2.2.2 | Menyusun Sequence Diagram bersama Programmer | 50e% | 2026-09-03 | 2026-09-03 | 20 | Fakhrian Iqbal Zulkarnain [12%] |
| 22 | 2.2.3 | Menyusun Class Diagram awal bersama tim | 50e% | 2026-09-03 | 2026-09-03 | 21 | Fakhrian Iqbal Zulkarnain [12%] |
| 23 | 2.2.4 | Merancang UI login, inventaris, stok, dan penyemaian | 200e% | 2026-09-04 | 2026-09-07 | 16, 22 | Fakhrian Iqbal Zulkarnain [12%] |
| 24 | 2.3 | **Programmer** | 1600e% | 2026-08-31 | 2026-09-21 |  |  |
| 25 | 2.3.1 | Setup Flutter, backend, dan pengelolaan versi kode | 200e% | 2026-08-31 | 2026-09-01 | 9 | Aditya Dwi Ferdiansyah [25%]; Mochammad Wildan Alqori'in [25%] |
| 26 | 2.3.2 | Implementasi autentikasi dan hak akses | 200e% | 2026-09-04 | 2026-09-07 | 17, 25 | Aditya Dwi Ferdiansyah [8%]; Mochammad Wildan Alqori'in [25%] |
| 27 | 2.3.3 | Implementasi inventaris, stok, dan penyemaian | 600e% | 2026-09-08 | 2026-09-15 | 23, 26 | Aditya Dwi Ferdiansyah [25%]; Mochammad Wildan Alqori'in [25%] |
| 28 | 2.3.4 | Implementasi SQLite dan sinkronisasi awal | 200e% | 2026-09-16 | 2026-09-17 | 18, 27 | Aditya Dwi Ferdiansyah [25%]; Mochammad Wildan Alqori'in [25%] |
| 29 | 2.3.5 | Menyiapkan dataset dan pedoman anotasi | 400e% | 2026-09-02 | 2026-09-07 | 25 | Achmad Nuhan T. [8%]; Aditya Dwi Ferdiansyah [8%]; Fakhrian Iqbal Zulkarnain [12%] |
| 30 | 2.3.6 | Memeriksa kelayakan inferensi TFLite pada Android | 200e% | 2026-09-02 | 2026-09-03 | 25 | Aditya Dwi Ferdiansyah [12%]; Mochammad Wildan Alqori'in [25%] |
| 31 | 2.3.7 | Code review dan perbaikan implementasi | 200e% | 2026-09-18 | 2026-09-21 | 28, 30 | Aditya Dwi Ferdiansyah [25%]; Mochammad Wildan Alqori'in [25%] |

Notes:
- 1: Summary: tanggal dan durasi mengikuti anak; tanpa assignment resource atau predecessor.
- 2: Summary: tanggal dan durasi mengikuti anak; tanpa assignment resource atau predecessor.
- 3: WBS by Activity 1.1; Mitra Bapak Agus, Hidro Selada; ketersediaan kunjungan merupakan asumsi.
- 4: WBS by Activity 1.2;
- 5: WBS by Activity 1.3;
- 6: WBS by Activity 1.4;
- 7: WBS by Activity 1.5;
- 8: WBS by Activity 1.6;
- 9: WBS by Activity 1.7;
- 10: WBS by Activity 1.8;
- 11: WBS by Activity 1.9;
- 12: WBS by Activity 1.10; Tiga hama: thrips, whitefly, aphids; perangkat Android, BMKG, Turso, Cloudinary.
- 13: Summary: tanggal dan durasi mengikuti anak; tanpa assignment resource atau predecessor.
- 14: Summary: tanggal dan durasi mengikuti anak; tanpa assignment resource atau predecessor.
- 15: WBS by Activity 2.1.1;
- 16: WBS by Activity 2.1.2;
- 17: WBS by Activity 2.1.3;
- 18: WBS by Activity 2.1.4;
- 19: Summary: tanggal dan durasi mengikuti anak; tanpa assignment resource atau predecessor.
- 20: WBS by Activity 2.2.1;
- 21: WBS by Activity 2.2.2; Diagram ditinjau Programmer pada pekerjaan implementasinya.
- 22: WBS by Activity 2.2.3;
- 23: WBS by Activity 2.2.4;
- 24: Summary: tanggal dan durasi mengikuti anak; tanpa assignment resource atau predecessor.
- 25: WBS by Activity 2.3.1; Pilih Node.js atau FastAPI; tetapkan PIC AI. Aditya sebagai PIC teknis AI merupakan usulan perencanaan.
- 26: WBS by Activity 2.3.2; UI login tersedia bertahap setelah hari pertama desain.
- 27: WBS by Activity 2.3.3;
- 28: WBS by Activity 2.3.4;
- 29: WBS by Activity 2.3.5; Programmer memimpin; Designer dan Tester membantu pemeriksaan data/label. Pembagian bantuan ini adalah usulan.
- 30: WBS by Activity 2.3.6; PoC memakai model pralatih ringan sebelum pelatihan lengkap.
- 31: WBS by Activity 2.3.7;

| ID | WBS | Task | Duration | Start | Finish | Predecessors | Resources |
| --- | --- | --- | --- | --- | --- | --- | --- |
| 32 | 2.4 | **Tester** | 1300e% | 2026-09-03 | 2026-09-21 |  |  |
| 33 | 2.4.1 | Menyusun Software Testing Plan Sprint 1 | 300e% | 2026-09-03 | 2026-09-07 | 16 | Achmad Nuhan T. [8%] |
| 34 | 2.4.2 | Uji autentikasi, hak akses, inventaris, dan penyemaian | 600e% | 2026-09-08 | 2026-09-15 | 26, 27FF, 33 | Achmad Nuhan T. [25%] |
| 35 | 2.4.3 | Uji penyimpanan luring dan sinkronisasi awal | 300e% | 2026-09-16 | 2026-09-18 | 28FF+1d, 34 | Achmad Nuhan T. [25%] |
| 36 | 2.4.4 | Mencatat hasil pemeriksaan model pada perangkat | 100e% | 2026-09-04 | 2026-09-04 | 30 | Achmad Nuhan T. [8%] |
| 37 | 2.4.5 | Retest perbaikan dan Software Testing Report Sprint 1 | 100e% | 2026-09-21 | 2026-09-21 | 31SS+1d, 35, 36 | Achmad Nuhan T. [25%] |
| 38 | 2.5 | **End** | 100e% | 2026-09-22 | 2026-09-22 |  |  |
| 39 | 2.5.1 | Sprint Review 1 | 50e% | 2026-09-22 | 2026-09-22 | 18, 23, 29, 37 | Achmad Nuhan T. [25%]; Aditya Dwi Ferdiansyah [25%]; Fakhrian Iqbal Zulkarnain [25%]; Mochammad Wildan Alqori'in [25%]; Siti Raudatul Jannah [25%] |
| 40 | 2.5.2 | Sprint Retrospective 1 | 25e% | 2026-09-22 | 2026-09-22 | 39 | Achmad Nuhan T. [25%]; Aditya Dwi Ferdiansyah [25%]; Fakhrian Iqbal Zulkarnain [25%]; Mochammad Wildan Alqori'in [25%]; Siti Raudatul Jannah [25%] |
| 41 | 2.5.3 | Memperbarui Product Backlog bersama tim | 25e% | 2026-09-22 | 2026-09-22 | 40 | Achmad Nuhan T. [25%]; Aditya Dwi Ferdiansyah [25%]; Fakhrian Iqbal Zulkarnain [25%]; Mochammad Wildan Alqori'in [25%]; Siti Raudatul Jannah [25%] |
| 42 | 3 | **SPRINT 2: Pengelolaan Budidaya dan Deteksi Hama** | 1700e% | 2026-09-23 | 2026-10-15 |  |  |
| 43 | 3.1 | **Analyst** | 400e% | 2026-09-23 | 2026-09-28 |  |  |
| 44 | 3.1.1 | Memperinci kebutuhan meja, pemindahan, dan kerusakan tanaman | 100e% | 2026-09-23 | 2026-09-23 | 41 | Siti Raudatul Jannah [25%] |
| 45 | 3.1.2 | Menyusun user story dan kriteria penerimaan | 100e% | 2026-09-24 | 2026-09-24 | 44 | Siti Raudatul Jannah [25%] |
| 46 | 3.1.3 | Aturan kapasitas meja dan jumlah tanaman aktif | 50e% | 2026-09-25 | 2026-09-25 | 45 | Siti Raudatul Jannah [25%] |
| 47 | 3.1.4 | Menetapkan hubungan batch dengan hasil deteksi | 50e% | 2026-09-25 | 2026-09-25 | 46 | Siti Raudatul Jannah [25%] |
| 48 | 3.1.5 | Respons gambar tidak valid dan hasil tanpa deteksi | 100e% | 2026-09-28 | 2026-09-28 | 47 | Siti Raudatul Jannah [25%] |
| 49 | 3.2 | **Designer** | 350e% | 2026-09-24 | 2026-09-29 |  |  |
| 50 | 3.2.1 | Activity Diagram budidaya dan deteksi | 50e% | 2026-09-24 | 2026-09-24 | 44 | Fakhrian Iqbal Zulkarnain [25%] |
| 51 | 3.2.2 | Sequence Diagram bersama Programmer | 50e% | 2026-09-24 | 2026-09-24 | 50 | Fakhrian Iqbal Zulkarnain [25%] |
| 52 | 3.2.3 | Memperbarui Class Diagram bersama tim | 50e% | 2026-09-25 | 2026-09-25 | 51 | Fakhrian Iqbal Zulkarnain [25%] |
| 53 | 3.2.4 | UI meja, pemindahan, kerusakan, dan deteksi | 150e% | 2026-09-25 | 2026-09-28 | 45, 52 | Fakhrian Iqbal Zulkarnain [25%] |
| 54 | 3.2.5 | Flowchart AI bersama Programmer | 50e% | 2026-09-29 | 2026-09-29 | 48, 53 | Fakhrian Iqbal Zulkarnain [25%] |
| 55 | 3.3 | **Programmer** | 1500e% | 2026-09-23 | 2026-10-13 |  |  |
| 56 | 3.3.1 | Implementasi meja tanam dan pemindahan | 400e% | 2026-09-29 | 2026-10-02 | 46, 53 | Aditya Dwi Ferdiansyah [12%]; Mochammad Wildan Alqori'in [25%] |
| 57 | 3.3.2 | Implementasi kerusakan dan perhitungan tanaman aktif | 200e% | 2026-10-05 | 2026-10-06 | 56 | Aditya Dwi Ferdiansyah [12%]; Mochammad Wildan Alqori'in [12%] |
| 58 | 3.3.3 | Menyelesaikan anotasi dan pembagian dataset | 200e% | 2026-09-23 | 2026-09-24 | 29, 41 | Achmad Nuhan T. [25%]; Aditya Dwi Ferdiansyah [25%] |
| 59 | 3.3.4 | Melatih model dan menyetel dengan data validasi | 500e% | 2026-09-25 | 2026-10-01 | 30, 58 | Achmad Nuhan T. [12%]; Aditya Dwi Ferdiansyah [12%] |
| 60 | 3.3.5 | Mengonversi model ke TensorFlow Lite | 200e% | 2026-10-02 | 2026-10-05 | 59 | Aditya Dwi Ferdiansyah [12%] |
| 61 | 3.3.6 | Integrasi kamera, galeri, dan inferensi lokal | 400e% | 2026-10-06 | 2026-10-09 | 54, 60 | Mochammad Wildan Alqori'in [12%] |
| 62 | 3.3.7 | Hubungan hasil deteksi dengan batch dan penyimpanan | 300e% | 2026-10-07 | 2026-10-09 | 47, 57, 60 | Aditya Dwi Ferdiansyah [25%] |
| 63 | 3.3.8 | Code review dan perbaikan implementasi | 200e% | 2026-10-12 | 2026-10-13 | 61, 62 | Aditya Dwi Ferdiansyah [25%]; Mochammad Wildan Alqori'in [25%] |

Notes:
- 32: Summary: tanggal dan durasi mengikuti anak; tanpa assignment resource atau predecessor.
- 33: WBS by Activity 2.4.1;
- 34: WBS by Activity 2.4.2; Uji dimulai dari autentikasi yang selesai, lalu modul inventaris/penyemaian per build. Slot 1 jam/hari; tersisa kapasitas untuk validasi dataset.
- 35: WBS by Activity 2.4.3; Hari awal menguji persistensi lokal; pengujian sinkronisasi lengkap setelah build tersedia.
- 36: WBS by Activity 2.4.4;
- 37: WBS by Activity 2.4.5; Retest patch bertahap pada hari kedua perbaikan; laporan ditutup setelah code review/perbaikan selesai.
- 38: Summary: tanggal dan durasi mengikuti anak; tanpa assignment resource atau predecessor.
- 39: WBS by Activity 2.5.1;
- 40: WBS by Activity 2.5.2;
- 41: WBS by Activity 2.5.3;
- 42: Summary: tanggal dan durasi mengikuti anak; tanpa assignment resource atau predecessor.
- 43: Summary: tanggal dan durasi mengikuti anak; tanpa assignment resource atau predecessor.
- 44: WBS by Activity 3.1.1;
- 45: WBS by Activity 3.1.2;
- 46: WBS by Activity 3.1.3;
- 47: WBS by Activity 3.1.4;
- 48: WBS by Activity 3.1.5;
- 49: Summary: tanggal dan durasi mengikuti anak; tanpa assignment resource atau predecessor.
- 50: WBS by Activity 3.2.1;
- 51: WBS by Activity 3.2.2;
- 52: WBS by Activity 3.2.3;
- 53: WBS by Activity 3.2.4;
- 54: WBS by Activity 3.2.5;
- 55: Summary: tanggal dan durasi mengikuti anak; tanpa assignment resource atau predecessor.
- 56: WBS by Activity 3.3.1; UI meja tersedia lebih dahulu dalam desain bertahap.
- 57: WBS by Activity 3.3.2;
- 58: WBS by Activity 3.3.3; Split berdasarkan sumber/foto agar tidak bocor. Sepakati ambang precision, recall, F1, mAP sebelum test set akhir.
- 59: WBS by Activity 3.3.4; Transfer learning YOLO ringan; durasi ialah jendela aktivitas mahasiswa, waktu mesin bukan seluruhnya effort aktif.
- 60: WBS by Activity 3.3.5;
- 61: WBS by Activity 3.3.6;
- 62: WBS by Activity 3.3.7;
- 63: WBS by Activity 3.3.8;

| ID | WBS | Task | Duration | Start | Finish | Predecessors | Resources |
| --- | --- | --- | --- | --- | --- | --- | --- |
| 64 | 3.4 | **Tester** | 1400e% | 2026-09-25 | 2026-10-14 |  |  |
| 65 | 3.4.1 | Software Testing Plan Sprint 2 | 300e% | 2026-09-25 | 2026-09-29 | 45 | Achmad Nuhan T. [12%] |
| 66 | 3.4.2 | Uji kapasitas meja dan konsistensi jumlah tanaman | 300e% | 2026-10-05 | 2026-10-07 | 56, 57FF+1d, 65 | Achmad Nuhan T. [12%] |
| 67 | 3.4.3 | Uji input gambar, inferensi luring, dan kondisi gagal | 300e% | 2026-10-08 | 2026-10-12 | 61FF+1d, 66 | Achmad Nuhan T. [12%] |
| 68 | 3.4.4 | Kualitas deteksi sebelum dan sesudah konversi | 200e% | 2026-10-06 | 2026-10-07 | 60 | Achmad Nuhan T. [12%] |
| 69 | 3.4.5 | Mengukur waktu inferensi pada perangkat sasaran | 200e% | 2026-10-08 | 2026-10-09 | 60, 68 | Achmad Nuhan T. [12%] |
| 70 | 3.4.6 | Retest dan Software Testing Report Sprint 2 | 200e% | 2026-10-13 | 2026-10-14 | 63SS+1d, 67, 69 | Achmad Nuhan T. [25%] |
| 71 | 3.5 | **End** | 100e% | 2026-10-15 | 2026-10-15 |  |  |
| 72 | 3.5.1 | Sprint Review 2 | 50e% | 2026-10-15 | 2026-10-15 | 48, 54, 70 | Achmad Nuhan T. [25%]; Aditya Dwi Ferdiansyah [25%]; Fakhrian Iqbal Zulkarnain [25%]; Mochammad Wildan Alqori'in [25%]; Siti Raudatul Jannah [25%] |
| 73 | 3.5.2 | Sprint Retrospective 2 | 25e% | 2026-10-15 | 2026-10-15 | 72 | Achmad Nuhan T. [25%]; Aditya Dwi Ferdiansyah [25%]; Fakhrian Iqbal Zulkarnain [25%]; Mochammad Wildan Alqori'in [25%]; Siti Raudatul Jannah [25%] |
| 74 | 3.5.3 | Memperbarui Product Backlog bersama tim | 25e% | 2026-10-15 | 2026-10-15 | 73 | Achmad Nuhan T. [25%]; Aditya Dwi Ferdiansyah [25%]; Fakhrian Iqbal Zulkarnain [25%]; Mochammad Wildan Alqori'in [25%]; Siti Raudatul Jannah [25%] |
| 75 | 4 | **SPRINT 3: Perawatan, Panen, Penjualan, dan Cuaca** | 1600e% | 2026-10-16 | 2026-11-06 |  |  |
| 76 | 4.1 | **Analyst** | 500e% | 2026-10-16 | 2026-10-22 |  |  |
| 77 | 4.1.1 | Memperinci aturan rekomendasi dan rotasi obat | 100e% | 2026-10-16 | 2026-10-16 | 74 | Siti Raudatul Jannah [25%] |
| 78 | 4.1.2 | Keputusan petani dan pencatatan tindakan aktual | 100e% | 2026-10-19 | 2026-10-19 | 77 | Siti Raudatul Jannah [25%] |
| 79 | 4.1.3 | Memperinci kebutuhan panen, penjualan, dan profil | 100e% | 2026-10-20 | 2026-10-20 | 78 | Siti Raudatul Jannah [25%] |
| 80 | 4.1.4 | Validasi kebutuhan parameter cuaca bersama Programmer | 100e% | 2026-10-21 | 2026-10-21 | 79 | Aditya Dwi Ferdiansyah [6%]; Siti Raudatul Jannah [25%] |
| 81 | 4.1.5 | Menyusun user story dan kriteria penerimaan | 100e% | 2026-10-22 | 2026-10-22 | 80 | Siti Raudatul Jannah [25%] |
| 82 | 4.2 | **Designer** | 400e% | 2026-10-19 | 2026-10-22 |  |  |
| 83 | 4.2.1 | Activity Diagram fitur sprint ketiga | 50e% | 2026-10-19 | 2026-10-19 | 77 | Fakhrian Iqbal Zulkarnain [25%] |
| 84 | 4.2.2 | Sequence Diagram integrasi bersama Programmer | 50e% | 2026-10-19 | 2026-10-19 | 83 | Fakhrian Iqbal Zulkarnain [25%] |
| 85 | 4.2.3 | Memperbarui Class Diagram bersama tim | 50e% | 2026-10-20 | 2026-10-20 | 84 | Fakhrian Iqbal Zulkarnain [25%] |
| 86 | 4.2.4 | UI perawatan, panen, penjualan, cuaca, dan profil | 200e% | 2026-10-20 | 2026-10-22 | 78, 85 | Fakhrian Iqbal Zulkarnain [25%] |
| 87 | 4.2.5 | Flowchart AI dan alur rekomendasi berbasis aturan | 50e% | 2026-10-22 | 2026-10-22 | 80, 86 | Fakhrian Iqbal Zulkarnain [25%] |

Notes:
- 64: Summary: tanggal dan durasi mengikuti anak; tanpa assignment resource atau predecessor.
- 65: WBS by Activity 3.4.1;
- 66: WBS by Activity 3.4.2; Uji bertahap mulai build meja awal; cek konsistensi setelah implementasi meja lengkap.
- 67: WBS by Activity 3.4.3; Build input/inferensi pertama diuji setelah dua hari integrasi; selesaikan uji pada build lengkap.
- 68: WBS by Activity 3.4.4;
- 69: WBS by Activity 3.4.5; Target awal <5 detik/gambar; kondisi perangkat dicatat.
- 70: WBS by Activity 3.4.6;
- 71: Summary: tanggal dan durasi mengikuti anak; tanpa assignment resource atau predecessor.
- 72: WBS by Activity 3.5.1;
- 73: WBS by Activity 3.5.2;
- 74: WBS by Activity 3.5.3;
- 75: Summary: tanggal dan durasi mengikuti anak; tanpa assignment resource atau predecessor.
- 76: Summary: tanggal dan durasi mengikuti anak; tanpa assignment resource atau predecessor.
- 77: WBS by Activity 4.1.1; Aturan ditinjau bersama mitra; mengikuti kebutuhan yang terdokumentasi.
- 78: WBS by Activity 4.1.2;
- 79: WBS by Activity 4.1.3;
- 80: WBS by Activity 4.1.4; Cek lokasi, waktu, parameter BMKG dan kondisi data tidak tersedia.
- 81: WBS by Activity 4.1.5;
- 82: Summary: tanggal dan durasi mengikuti anak; tanpa assignment resource atau predecessor.
- 83: WBS by Activity 4.2.1;
- 84: WBS by Activity 4.2.2;
- 85: WBS by Activity 4.2.3;
- 86: WBS by Activity 4.2.4;
- 87: WBS by Activity 4.2.5;

| ID | WBS | Task | Duration | Start | Finish | Predecessors | Resources |
| --- | --- | --- | --- | --- | --- | --- | --- |
| 88 | 4.3 | **Programmer** | 1200e% | 2026-10-16 | 2026-11-02 |  |  |
| 89 | 4.3.1 | Implementasi rekomendasi dan keputusan petani | 200e% | 2026-10-20 | 2026-10-22 | 78, 85 | Aditya Dwi Ferdiansyah [6%]; Mochammad Wildan Alqori'in [8%] |
| 90 | 4.3.2 | Implementasi perawatan dan riwayat penggunaan obat | 200e% | 2026-10-23 | 2026-10-26 | 87, 89 | Aditya Dwi Ferdiansyah [8%]; Mochammad Wildan Alqori'in [8%] |
| 91 | 4.3.3 | Menghubungkan pemakaian bahan dengan stok | 100e% | 2026-10-27 | 2026-10-27 | 90 | Aditya Dwi Ferdiansyah [12%]; Mochammad Wildan Alqori'in [12%] |
| 92 | 4.3.4 | Implementasi panen dan penjualan | 400e% | 2026-10-21 | 2026-10-26 | 79, 85 | Aditya Dwi Ferdiansyah [6%]; Mochammad Wildan Alqori'in [8%] |
| 93 | 4.3.5 | Integrasi BMKG dan aturan perawatan cuaca | 300e% | 2026-10-23 | 2026-10-27 | 80, 87, 89 | Aditya Dwi Ferdiansyah [8%]; Mochammad Wildan Alqori'in [8%] |
| 94 | 4.3.6 | Implementasi perubahan profil | 100e% | 2026-10-21 | 2026-10-21 | 79, 85 | Aditya Dwi Ferdiansyah [6%]; Mochammad Wildan Alqori'in [8%] |
| 95 | 4.3.7 | Melengkapi sinkronisasi dan penyimpanan gambar | 200e% | 2026-10-28 | 2026-10-29 | 91, 92, 93, 94 | Aditya Dwi Ferdiansyah [25%]; Mochammad Wildan Alqori'in [25%] |
| 96 | 4.3.8 | Menyempurnakan model berdasarkan data validasi | 300e% | 2026-10-16 | 2026-10-20 | 74 | Aditya Dwi Ferdiansyah [12%]; Mochammad Wildan Alqori'in [12%] |
| 97 | 4.3.9 | Code review dan perbaikan implementasi | 200e% | 2026-10-30 | 2026-11-02 | 95, 96 | Aditya Dwi Ferdiansyah [25%]; Mochammad Wildan Alqori'in [25%] |
| 98 | 4.4 | **Tester** | 1400e% | 2026-10-19 | 2026-11-05 |  |  |
| 99 | 4.4.1 | Software Testing Plan Sprint 3 | 400e% | 2026-10-19 | 2026-10-22 | 77 | Achmad Nuhan T. [12%] |
| 100 | 4.4.2 | Uji rekomendasi, keputusan petani, dan perawatan aktual | 200e% | 2026-10-27 | 2026-10-28 | 89, 90, 99 | Achmad Nuhan T. [25%] |
| 101 | 4.4.3 | Uji konsistensi stok, tanaman, panen, dan penjualan | 200e% | 2026-10-29 | 2026-10-30 | 91FF+0.5d, 92FF+0.5d, 100 | Achmad Nuhan T. [25%] |
| 102 | 4.4.4 | Uji API pada kondisi normal dan gagal | 200e% | 2026-11-02 | 2026-11-03 | 93FF+0.5d, 101 | Achmad Nuhan T. [25%] |
| 103 | 4.4.5 | Uji perubahan profil sesuai kewenangan | 100e% | 2026-10-22 | 2026-10-22 | 94 | Achmad Nuhan T. [12%] |
| 104 | 4.4.6 | Uji alur penyemaian sampai penjualan | 100e% | 2026-11-04 | 2026-11-04 | 95FF+0.5d, 102, 103 | Achmad Nuhan T. [25%] |
| 105 | 4.4.7 | Retest dan Software Testing Report Sprint 3 | 100e% | 2026-11-05 | 2026-11-05 | 97SS+1d, 104 | Achmad Nuhan T. [25%] |
| 106 | 4.5 | **End** | 100e% | 2026-11-06 | 2026-11-06 |  |  |
| 107 | 4.5.1 | Sprint Review 3 | 25e% | 2026-11-06 | 2026-11-06 | 81, 87, 105 | Achmad Nuhan T. [25%]; Aditya Dwi Ferdiansyah [25%]; Fakhrian Iqbal Zulkarnain [25%]; Mochammad Wildan Alqori'in [25%]; Siti Raudatul Jannah [25%] |
| 108 | 4.5.2 | Sprint Retrospective 3 | 25e% | 2026-11-06 | 2026-11-06 | 107 | Achmad Nuhan T. [25%]; Aditya Dwi Ferdiansyah [25%]; Fakhrian Iqbal Zulkarnain [25%]; Mochammad Wildan Alqori'in [25%]; Siti Raudatul Jannah [25%] |
| 109 | 4.5.3 | Memperbarui Product Backlog bersama tim | 25e% | 2026-11-06 | 2026-11-06 | 108 | Achmad Nuhan T. [25%]; Aditya Dwi Ferdiansyah [25%]; Fakhrian Iqbal Zulkarnain [25%]; Mochammad Wildan Alqori'in [25%]; Siti Raudatul Jannah [25%] |
| 110 | 4.5.4 | Prioritas penyempurnaan dan validasi lapangan | 25e% | 2026-11-06 | 2026-11-06 | 109 | Achmad Nuhan T. [25%]; Aditya Dwi Ferdiansyah [25%]; Fakhrian Iqbal Zulkarnain [25%]; Mochammad Wildan Alqori'in [25%]; Siti Raudatul Jannah [25%] |
| 111 | 5 | **SPRINT 4: Penyempurnaan dan Penyerahan Produk** | 1500e% | 2026-11-09 | 2026-11-27 |  |  |
| 112 | 5.1 | **Analyst** | 1400e% | 2026-11-09 | 2026-11-26 |  |  |
| 113 | 5.1.1 | Meninjau kesesuaian implementasi dengan kebutuhan | 200e% | 2026-11-09 | 2026-11-10 | 110 | Siti Raudatul Jannah [25%] |
| 114 | 5.1.2 | Keterlacakan kebutuhan terhadap hasil pengujian | 100e% | 2026-11-26 | 2026-11-26 | 116, 135, 136, 137, 139FF | Achmad Nuhan T. [8%]; Siti Raudatul Jannah [12%] |
| 115 | 5.1.3 | Skenario validasi bersama mitra dan Tester | 100e% | 2026-11-11 | 2026-11-11 | 113, 131 | Siti Raudatul Jannah [25%] |
| 116 | 5.1.4 | Memperbarui SRS berdasarkan hasil yang disepakati | 200e% | 2026-11-18 | 2026-11-19 | 115, 137 | Siti Raudatul Jannah [25%] |

Notes:
- 88: Summary: tanggal dan durasi mengikuti anak; tanpa assignment resource atau predecessor.
- 89: WBS by Activity 4.3.1;
- 90: WBS by Activity 4.3.2;
- 91: WBS by Activity 4.3.3;
- 92: WBS by Activity 4.3.4;
- 93: WBS by Activity 4.3.5;
- 94: WBS by Activity 4.3.6;
- 95: WBS by Activity 4.3.7;
- 96: WBS by Activity 4.3.8; Test set akhir tetap terpisah. Model terbaik diekspor dan dicek kompatibilitasnya.
- 97: WBS by Activity 4.3.9;
- 98: Summary: tanggal dan durasi mengikuti anak; tanpa assignment resource atau predecessor.
- 99: WBS by Activity 4.4.1;
- 100: WBS by Activity 4.4.2;
- 101: WBS by Activity 4.4.3;
- 102: WBS by Activity 4.4.4;
- 103: WBS by Activity 4.4.5;
- 104: WBS by Activity 4.4.6;
- 105: WBS by Activity 4.4.7;
- 106: Summary: tanggal dan durasi mengikuti anak; tanpa assignment resource atau predecessor.
- 107: WBS by Activity 4.5.1;
- 108: WBS by Activity 4.5.2;
- 109: WBS by Activity 4.5.3;
- 110: WBS by Activity 4.5.4;
- 111: Summary: tanggal dan durasi mengikuti anak; tanpa assignment resource atau predecessor.
- 112: Summary: tanggal dan durasi mengikuti anak; tanpa assignment resource atau predecessor.
- 113: WBS by Activity 5.1.1;
- 114: WBS by Activity 5.1.2; Pemeriksaan akhir menggunakan STR final 25 November. Gerbang ketersediaan laporan diikat pada tanggal mulai 26 November; tidak ditautkan balik ke kelompok Tester agar hierarki role bebas circular dependency ProjectLibre.
- 115: WBS by Activity 5.1.3; Jadwal kunjungan 17 November merupakan asumsi; harus dikonfirmasi tim dengan mitra.
- 116: WBS by Activity 5.1.4; Tanggal mulai setelah usability 17 November; SRS diselaraskan dengan perbaikan 19–20 November. Umpan balik lintas-role ditetapkan melalui tanggal mulai, tanpa tautan balik ke Tester/Programmer.

| ID | WBS | Task | Type | Duration | Start | Finish | Predecessors | Deadline | Calendar | Resources |
| --- | --- | --- | --- | --- | --- | --- | --- | --- | --- | --- |
| 117 | 5.2 | **Designer** |  | 1200e% | 2026-11-09 | 2026-11-24 |  |  |  |  |
| 118 | 5.2.1 | Meninjau konsistensi antarmuka |  | 200e% | 2026-11-09 | 2026-11-10 | 110 |  |  | Fakhrian Iqbal Zulkarnain [25%] |
| 119 | 5.2.2 | Perbaikan rancangan berdasarkan usability testing |  | 100e% | 2026-11-18 | 2026-11-18 | 118FS+5d |  |  | Fakhrian Iqbal Zulkarnain [25%] |
| 120 | 5.2.3 | Menyelaraskan diagram dengan implementasi akhir |  | 200e% | 2026-11-19 | 2026-11-20 | 119 |  |  | Fakhrian Iqbal Zulkarnain [25%] |
| 121 | 5.2.4 | Materi visual panduan pengguna |  | 200e% | 2026-11-23 | 2026-11-24 | 120 |  |  | Fakhrian Iqbal Zulkarnain [25%] |
| 122 | 5.3 | **Programmer** |  | 1400e% | 2026-11-09 | 2026-11-26 |  |  |  |  |
| 123 | 5.3.1 | Perbaikan temuan fungsional dan integrasi |  | 200e% | 2026-11-09 | 2026-11-10 | 110 |  |  | Aditya Dwi Ferdiansyah [25%]; Mochammad Wildan Alqori'in [25%] |
| 124 | 5.3.2 | Penyempurnaan retry dan penanganan konflik data |  | 200e% | 2026-11-11 | 2026-11-12 | 123 |  |  | Aditya Dwi Ferdiansyah [25%]; Mochammad Wildan Alqori'in [25%] |
| 125 | 5.3.3 | Optimasi aplikasi dan model |  | 200e% | 2026-11-13 | 2026-11-16 | 118, 124 |  |  | Aditya Dwi Ferdiansyah [25%]; Mochammad Wildan Alqori'in [25%] |
| 126 | 5.3.4 | Menerapkan perbaikan antarmuka |  | 200e% | 2026-11-19 | 2026-11-20 | 119 |  |  | Aditya Dwi Ferdiansyah [25%]; Mochammad Wildan Alqori'in [25%] |
| 127 | 5.3.5 | Code review akhir dan perbaikan minor |  | 200e% | 2026-11-23 | 2026-11-24 | 126 |  |  | Aditya Dwi Ferdiansyah [25%]; Mochammad Wildan Alqori'in [25%] |
| 128 | 5.3.6 | Paket aplikasi, backend, dan model |  | 100e% | 2026-11-25 | 2026-11-25 | 127 |  |  | Aditya Dwi Ferdiansyah [25%]; Mochammad Wildan Alqori'in [25%] |
| 129 | 5.3.7 | Melengkapi dokumentasi teknis |  | 100e% | 2026-11-26 | 2026-11-26 | 128 |  |  | Aditya Dwi Ferdiansyah [25%]; Mochammad Wildan Alqori'in [25%] |
| 130 | 5.4 | **Tester** |  | 1400e% | 2026-11-09 | 2026-11-26 |  |  |  |  |
| 131 | 5.4.1 | Software Testing Plan pengujian akhir |  | 200e% | 2026-11-09 | 2026-11-10 | 110 |  |  | Achmad Nuhan T. [25%] |
| 132 | 5.4.2 | Black box testing dan API testing |  | 200e% | 2026-11-11 | 2026-11-12 | 123, 131 |  |  | Achmad Nuhan T. [25%] |
| 133 | 5.4.3 | Uji hak akses, luring, dan pemulihan koneksi |  | 200e% | 2026-11-13 | 2026-11-16 | 124, 132 |  |  | Achmad Nuhan T. [25%] |
| 134 | 5.4.4 | Uji duplikasi dan konflik sinkronisasi |  | 100e% | 2026-11-17 | 2026-11-17 | 125, 133 |  |  | Achmad Nuhan T. [12%] |
| 135 | 5.4.5 | Mengukur kinerja aplikasi pada kondisi terdokumentasi |  | 100e% | 2026-11-18 | 2026-11-18 | 125, 134 |  |  | Achmad Nuhan T. [12%] |
| 136 | 5.4.6 | Evaluasi model akhir dengan data uji terpisah |  | 100e% | 2026-11-18 | 2026-11-18 | 125, 134 |  |  | Achmad Nuhan T. [12%] |
| 137 | 5.4.7 | Usability testing bersama mitra |  | 100e% | 2026-11-17 | 2026-11-17 | 125, 131 |  |  | Achmad Nuhan T. [12%]; Aditya Dwi Ferdiansyah [25%]; Fakhrian Iqbal Zulkarnain [25%]; Mochammad Wildan Alqori'in [25%]; Siti Raudatul Jannah [25%] |
| 138 | 5.4.8 | Pengujian regresi setelah perbaikan |  | 200e% | 2026-11-25 | 2026-11-26 | 127, 135, 136, 137 |  |  | Achmad Nuhan T. [8%] |
| 139 | 5.4.9 | Memfinalisasi Software Testing Report |  | 100e% | 2026-11-26 | 2026-11-26 | 138SS+1d |  |  | Achmad Nuhan T. [8%] |
| 140 | 5.5 | **End** |  | 300e% | 2026-11-25 | 2026-11-27 |  |  |  |  |
| 141 | 5.5.1 | Sprint Review akhir |  | 25e% | 2026-11-27 | 2026-11-27 | 114, 129, 139 |  |  | Achmad Nuhan T. [25%]; Aditya Dwi Ferdiansyah [25%]; Fakhrian Iqbal Zulkarnain [25%]; Mochammad Wildan Alqori'in [25%]; Siti Raudatul Jannah [25%] |
| 142 | 5.5.2 | Sprint Retrospective 4 |  | 25e% | 2026-11-27 | 2026-11-27 | 141 |  |  | Achmad Nuhan T. [25%]; Aditya Dwi Ferdiansyah [25%]; Fakhrian Iqbal Zulkarnain [25%]; Mochammad Wildan Alqori'in [25%]; Siti Raudatul Jannah [25%] |
| 143 | 5.5.3 | Memeriksa kriteria keberhasilan proyek |  | 25e% | 2026-11-27 | 2026-11-27 | 142 |  |  | Achmad Nuhan T. [25%]; Aditya Dwi Ferdiansyah [25%]; Fakhrian Iqbal Zulkarnain [25%]; Mochammad Wildan Alqori'in [25%]; Siti Raudatul Jannah [25%] |
| 144 | 5.5.4 | Finalisasi laporan dan panduan pengguna |  | 200e% | 2026-11-25 | 2026-11-26 | 116, 121, 129FF |  |  | Fakhrian Iqbal Zulkarnain [25%]; Siti Raudatul Jannah [12%] |
| 145 | 5.5.5 | Milestone penyerahan produk - 28 November 2026 | milestone | 0e% | 2026-11-27 | 2026-11-27 | 143, 144 | 2026-11-28 | Penyerahan - Sabtu |  |
| 146 | 5.5.6 | Mencatat hasil penyerahan dan kebutuhan lanjutan |  | 25e% | 2026-11-27 | 2026-11-27 | 145 |  | Penyerahan - Sabtu | Aditya Dwi Ferdiansyah [25%]; Siti Raudatul Jannah [25%] |

Notes:
- 117: Summary: tanggal dan durasi mengikuti anak; tanpa assignment resource atau predecessor.
- 118: WBS by Activity 5.2.1;
- 119: WBS by Activity 5.2.2; Masukan usability 17 November menjadi gerbang; diikat pada tanggal mulai 18 November untuk menghindari tautan balik antar kelompok role.
- 120: WBS by Activity 5.2.3; Berjalan selama implementasi perbaikan 19–20 November; kesesuaian akhir diperiksa saat review.
- 121: WBS by Activity 5.2.4;
- 122: Summary: tanggal dan durasi mengikuti anak; tanpa assignment resource atau predecessor.
- 123: WBS by Activity 5.3.1;
- 124: WBS by Activity 5.3.2;
- 125: WBS by Activity 5.3.3; Hasil 16 November adalah build uji yang dapat dipasang untuk usability; bukan paket penyerahan final.
- 126: WBS by Activity 5.3.4; Rancangan perbaikan menindaklanjuti usability 17 November.
- 127: WBS by Activity 5.3.5; 23–24 November menyediakan ruang perbaikan minor hasil validasi 17–18 November; tanpa tambahan fitur. Gerbang hasil validasi diikat tanggal mulai, tanpa tautan balik ke Tester.
- 128: WBS by Activity 5.3.6; Paket ditutup sesudah regresi 23–24 November. Gerbang regresi diikat tanggal mulai 25 November, tanpa tautan balik ke kelompok Tester.
- 129: WBS by Activity 5.3.7; Dokumentasi ditutup setelah isi paket akhir tersedia.
- 130: Summary: tanggal dan durasi mengikuti anak; tanpa assignment resource atau predecessor.
- 131: WBS by Activity 5.4.1;
- 132: WBS by Activity 5.4.2;
- 133: WBS by Activity 5.4.3;
- 134: WBS by Activity 5.4.4;
- 135: WBS by Activity 5.4.5; Halaman <3 detik; inferensi <5 detik/gambar; sync <1 menit setelah koneksi tersedia; aturan cuaca <2 detik setelah data valid.
- 136: WBS by Activity 5.4.6; Gunakan test set tertutup dan ambang yang ditetapkan pada Sprint 2; laporkan per kelas.
- 137: WBS by Activity 5.4.7; Bapak Agus/pegawai menguji build di lingkungan penggunaan; hari kunjungan merupakan asumsi.
- 138: WBS by Activity 5.4.8; Regresi per patch; sesi akhir memakai patch terakhir hasil code review.
- 139: WBS by Activity 5.4.9; Termasuk pengecekan penutup pada paket final dan catatan perangkat/data/koneksi.
- 140: Summary: tanggal dan durasi mengikuti anak; tanpa assignment resource atau predecessor.
- 141: WBS by Activity 5.5.1;
- 142: WBS by Activity 5.5.2;
- 143: WBS by Activity 5.5.3;
- 144: WBS by Activity 5.5.4;
- 145: WBS by Activity 5.5.5; Tanggal wajib dari PDF; jam 15.00 merupakan asumsi agenda, bukan jam yang ditentukan PDF.
- 146: WBS by Activity 5.5.6; Slot khusus Sabtu, 0,5 jam effort per anggota. Tidak mengembangkan fitur baru; mencatat hasil dan kebutuhan lanjutan.
